# Stargazer

Schedule from MS Project, 2010-01-06 to 2010-03-31, 4 hours a day, A marks actual dates.
Okanagan College

## Calendars

- Standard: Mon 14:00-16:30; Tue off; Wed 14:30-16:30; Thu 14:30-18:30; Fri-Sun off. Exceptions (off unless hours are given): 2010-03-13 08:00-12:00, 13:00-17:00.

## Resources

| Resource |
| --- |
| Robert |
| Rob |

## Schedule

| ID | WBS | Task | Duration | Start | Finish | Predecessors | Complete | Remaining | Total slack | Free slack | Constraint | Resources | Work | Actual work | Text1 |
| --- | --- | --- | --- | --- | --- | --- | --- | --- | --- | --- | --- | --- | --- | --- | --- |
| 1 | 1 | **Iteration 8: Image Capturing: (Total: 100 units)** | 27.62d | 2010-01-06 14:30 A | 2010-03-31 15:00 |  | 7% | 25.71d | 0d |  |  | Rob | 136.25h | 1.75h | 16 |
| 2 | 1.1 | Business Modeling: (Total: 0 units) | 0.06d | 2010-03-13 08:00 A | 2010-03-13 08:15 |  |  | 0.06d | 6.94d |  |  |  |  |  |  |
| 3 | 1.2 | **Implementation: (Total: 55 units)** | 25.06d | 2010-01-06 14:30 | 2010-03-22 15:15 |  |  |  | 2.56d |  |  |  | 13.75h |  | 16 |
| 4 | 1.2.1 | **Web system** | 0.75d | 2010-01-06 14:30 | 2010-01-07 15:30 |  |  |  | 26.88d |  |  |  | 4h |  | 16 |
| 5 | 1.2.1.1 | Create batch file to allow images to be POST'ed to the web server | 3h | 2010-01-06 14:30 | 2010-01-07 15:30 |  |  |  | 26.88d |  |  | Rob | 3h |  | 12 |
| 6 | 1.2.1.2 | Make changes to triggers and batch files to handle extra camera-related inputs to telescope-controlling application | 1h | 2010-01-06 14:30 | 2010-01-06 15:30 |  |  |  | 27.38d |  |  | Rob | 1h |  |  |
| 7 | 1.2.2 | **Telescope-Controlling Application** | 24.88d | 2010-01-06 15:15 | 2010-03-22 15:15 |  |  |  | 2.56d |  |  |  | 9.75h |  |  |
| 8 | 1.2.2.1 | **A Test Program** | 1.88d | 2010-01-06 15:15 | 2010-01-11 16:15 |  |  |  | 25.56d |  |  |  | 8.5h |  | 16 |
| 9 | 1.2.2.1.1 | Create test program to communicate with the camera and take a picture | 4h | 2010-01-06 15:15 | 2010-01-07 17:15 | 29 |  |  | 25.56d | 0d |  | Robert | 4h |  | 16 |
| 10 | 1.2.2.1.2 | Test getting and setting parameters of the camera | 1h | 2010-01-07 17:15 | 2010-01-07 18:15 | 9, 29 |  |  | 26.19d |  |  | Robert | 1h |  |  |
| 11 | 1.2.2.1.3 | Allow input for selected parameters | 1h | 2010-01-07 17:15 | 2010-01-07 18:15 | 9 |  |  | 25.56d | 0d |  | Robert | 1h |  |  |
| 12 | 1.2.2.1.4 | Set parameters based on inputs | 1.5h | 2010-01-07 18:15 | 2010-01-11 15:15 | 9, 11, 29 |  |  | 25.56d | 0d |  | Robert | 1.5h |  |  |
| 13 | 1.2.2.1.5 | Add error checking | 1h | 2010-01-11 15:15 | 2010-01-11 16:15 | 9, 11, 12, 29 |  |  | 25.56d |  |  | Robert | 1h |  |  |
| 14 | 1.2.2.2 | **Integration with Telescope Controlling Application** | 0.31d | 2010-03-22 14:00 | 2010-03-22 15:15 |  |  |  | 2.56d |  |  |  | 1.25h |  | 16 |
| 15 | 1.2.2.2.1 | Migrate source code to telescope control app | 0.25h | 2010-03-22 14:00 | 2010-03-22 14:15 |  |  |  | 2.56d | 0d | start no earlier than 2010-03-19 08:00 | Robert | 0.25h |  |  |
| 16 | 1.2.2.2.2 | Clean up camera code and convert it to a method | 0.5h | 2010-03-22 14:15 | 2010-03-22 14:45 | 15 |  |  | 2.56d | 0d |  | Robert | 0.5h |  |  |
| 17 | 1.2.2.2.3 | Modify main method to pass camera settings to camera method | 0.5h | 2010-03-22 14:45 | 2010-03-22 15:15 | 16 |  |  | 2.56d |  |  | Robert | 0.5h |  |  |
| 18 | 1.3 | **Testing: (Total: 19 units)** | 0.75d | 2010-03-26 08:00 A | 2010-03-31 15:00 |  | 32% | 0.51d | 0d |  |  |  | 4.75h | 1.5h | 16 |
| 19 | 1.3.1 | **Web system** | 0.75d | 2010-03-26 08:00 A | 2010-03-31 15:00 |  | 50% | 0.38d | 0d |  |  |  | 3h | 1.5h | 16 |
| 20 | 1.3.1.1 | Fix issue with testing environment | 3h | 2010-03-26 08:00 A | 2010-03-31 15:00 |  | 50% | 1.5h | 0d |  |  | Rob | 3h | 1.5h | 12 |
| 21 | 1.3.2 | **Telescope-Controlling Application** | 0.31d | 2010-03-29 14:00 | 2010-03-29 15:15 |  |  |  | 0.44d |  |  |  | 1.75h |  | 16 |
| 22 | 1.3.2.1 | Create camera test method | 0.25h | 2010-03-29 14:00 | 2010-03-29 14:15 |  |  |  | 0.44d | 0d | start no earlier than 2010-03-29 08:00 | Robert | 0.25h |  |  |
| 23 | 1.3.2.2 | Accept inputs from telescope control app | 0.25h | 2010-03-29 14:15 | 2010-03-29 14:30 | 22 |  |  | 0.62d |  |  | Robert | 0.25h |  |  |
| 24 | 1.3.2.3 | Output a test image | 0.25h | 2010-03-29 14:15 | 2010-03-29 14:30 | 22 |  |  | 0.62d |  |  | Robert | 0.25h |  |  |
| 25 | 1.3.2.4 | Simulate camera commands | 1h | 2010-03-29 14:15 | 2010-03-29 15:15 | 22 |  |  | 0.44d |  |  | Robert | 1h |  |  |

Notes:
- 8: Create test program to handle image taking with specific parameters

| ID | WBS | Task | Type | Duration | Start | Finish | Predecessors | Complete | Remaining | Total slack | Free slack | Constraint | Resources | Work | Actual work | Text1 |
| --- | --- | --- | --- | --- | --- | --- | --- | --- | --- | --- | --- | --- | --- | --- | --- | --- |
| 26 | 1.4 | **Analysis and Design: (Total: 25 units)** |  | 27.5d | 2010-01-06 14:30 A | 2010-03-31 08:00 |  |  | 27.5d | 0.12d |  |  |  | 7h |  | 16 |
| 27 | 1.4.1 | Create detailed plan |  | 2h | 2010-01-06 14:30 | 2010-01-06 16:30 |  |  |  | 27.12d |  |  | Rob | 2h |  |  |
| 28 | 1.4.2 | Create PowerPoint for final presentation |  | 2h | 2010-03-25 14:30 | 2010-03-25 16:30 |  |  |  | 1.25d |  | start no earlier than 2010-03-25 08:00 | Rob | 2h |  |  |
| 29 | 1.4.3 | Read camera documentation |  | 0.75h | 2010-01-06 14:30 | 2010-01-06 15:15 |  |  |  | 25.56d | 0d |  | Robert; Rob | 1.5h |  |  |
| 30 | 1.4.4 | Update wiki |  | 1.5h | 2010-01-06 14:30 | 2010-01-06 16:00 |  |  |  | 27.25d |  |  | Rob | 1.5h |  |  |
| 31 | 1.4.5 | All documentation finished | milestone | 0d | 2010-03-31 08:00 A | 2010-03-31 08:00 A |  | 100% |  |  |  | start no earlier than 2010-03-13 08:00 | Rob; Robert |  |  |  |
| 32 | 1.5 | **Deployment: (Total: 1 unit)** |  | 0.06d | 2010-03-13 08:00 A | 2010-03-13 08:15 A |  | 100% |  |  |  |  |  | 0.25h | 0.25h | 16 |
| 33 | 1.5.1 | Deploy latest versions of web application to production |  | 15min | 2010-03-13 08:00 A | 2010-03-13 08:15 A |  | 100% |  |  |  | start no earlier than 2010-03-12 08:00 | Rob | 0.25h | 0.25h |  |
| 34 | 1.6 | Release #8: Image Capturing | milestone | 0d | 2010-03-13 08:00 A | 2010-03-13 08:00 A | 4 | 100% |  |  |  | start no earlier than 2010-03-13 08:00 | Rob; Robert |  |  |  |
