# Stargazer

Schedule from MS Project, 2010-01-06 to 2010-04-26, 4 hours a day, A marks actual dates.
Okanagan College

## Calendars

- Standard: Mon 14:00-16:30; Tue off; Wed 14:30-16:30; Thu 14:30-18:30; Fri-Sun off. Exceptions (off unless hours are given): 2010-04-06 08:00-12:00, 13:00-17:00, 2010-04-20 08:00-12:00, 13:00-17:00.

## Resources

| Resource |
| --- |
| Robert |
| Rob |

## Schedule

| ID | WBS | Task | Type | Duration | Start | Finish | Predecessors | Complete | Constraint | Resources | Work | Actual work | Text1 |
| --- | --- | --- | --- | --- | --- | --- | --- | --- | --- | --- | --- | --- | --- |
| 1 | 1 | **Iteration 5: Automated Scheduling and Telescope Positioning** |  | 9d | 2010-01-06 14:30 A | 2010-02-04 08:00 A |  | 100% |  |  | 30.75h | 30.75h | 16 |
| 2 | 1.1 | **Web system** |  | 4.62d | 2010-01-06 14:30 A | 2010-01-20 16:00 A |  | 100% |  |  | 14.25h | 14.25h | 16 |
| 3 | 1.1.1 | Add new online help documentation to website |  | 3h | 2010-01-11 14:00 A | 2010-01-13 15:00 A |  | 100% | start no earlier than 2010-01-11 08:00 | Robert | 3h | 3h | 12 |
| 4 | 1.1.2 | Fix CSS with mobile devices |  | 15min | 2010-01-07 14:30 A | 2010-01-07 14:45 A |  | 100% | start no earlier than 2010-01-07 08:00 | Rob | 0.25h | 0.25h |  |
| 5 | 1.1.3 | Minor refactoring |  | 1.5h | 2010-01-07 14:30 A | 2010-01-07 16:00 A |  | 100% | start no earlier than 2010-01-07 08:00 | Rob | 1.5h | 1.5h |  |
| 6 | 1.1.4 | Research Rails plugin to handle scheduling |  | 2h | 2010-01-11 14:00 A | 2010-01-11 16:00 A |  | 100% | start no earlier than 2010-01-11 08:00 | Rob | 2h | 2h |  |
| 7 | 1.1.5 | Download and install Oracle 10g XE on telescope server |  | 1.5h | 2010-01-14 14:30 A | 2010-01-14 16:00 A | 6 | 100% | start no earlier than 2010-01-14 08:00 | Rob | 1.5h | 1.5h |  |
| 8 | 1.1.6 | Install Oracle client on web server |  | 1h | 2010-01-06 14:30 A | 2010-01-06 15:30 A |  | 100% |  | Rob | 1h | 1h |  |
| 9 | 1.1.7 | Configure Rails environment to now use the Oracle 10g XE database |  | 1h | 2010-01-14 16:00 A | 2010-01-14 17:00 A | 7 | 100% | start no earlier than 2010-01-14 08:00 | Rob | 1h | 1h |  |
| 10 | 1.1.8 | Create triggers/batch file to run application |  | 2h | 2010-01-18 16:00 A | 2010-01-20 16:00 A | 11 | 100% |  | Rob | 2h | 2h |  |
| 11 | 1.1.9 | Test connections and scheduling jobs |  | 2h | 2010-01-18 14:00 A | 2010-01-18 16:00 A | 9 | 100% | start no earlier than 2010-01-18 08:00 | Rob | 2h | 2h |  |
| 12 | 1.2 | **Telescope-controlling application** |  | 3.38d | 2010-01-06 14:30 A | 2010-01-14 17:30 A |  | 100% |  |  | 5h | 5h | 16 |
| 13 | 1.2.1 | Allow for parking the telescope |  | 1h | 2010-01-14 14:30 A | 2010-01-14 15:30 A |  | 100% | start no earlier than 2010-01-14 08:00 | Robert | 1h | 1h |  |
| 14 | 1.2.2 | Allow for telescope movement ability from entered celestial coordinates |  | 2h | 2010-01-14 15:30 A | 2010-01-14 17:30 A | 13 | 100% | start no earlier than 2010-01-14 08:00 | Robert | 2h | 2h |  |
| 15 | 1.2.3 | Test driver for all commands |  | 2h | 2010-01-06 14:30 A | 2010-01-06 16:30 A |  | 100% |  | Robert | 2h | 2h |  |
| 16 | 1.3 | **Documentation** |  | 1.25d | 2010-01-06 14:30 A | 2010-01-07 17:30 A |  | 100% |  |  | 11.5h | 11.5h | 16 |
| 17 | 1.3.1 | Documentation updates |  | 5h | 2010-01-06 14:30 A | 2010-01-07 17:30 A |  | 100% |  | Rob; Robert | 10h | 10h | 20 |
| 18 | 1.3.2 | Metrics gathering |  | 1.5h | 2010-01-06 14:30 A | 2010-01-06 16:00 A |  | 100% |  | Rob | 1.5h | 1.5h |  |
| 19 | 1.4 | Release #5: Automated Scheduling and Telescope Positioning | milestone | 0d | 2010-02-04 08:00 A | 2010-02-04 08:00 A | 2, 12, 16 | 100% | start no earlier than 2010-02-04 08:00 | Rob; Robert |  |  |  |
| 20 | 2 | **Iteration 6: Libraries and GUI Enhancements** |  | 7.38d | 2010-02-04 14:30 A | 2010-03-01 08:00 A | 1 | 100% |  |  | 64.25h | 64.25h | 16 |
| 21 | 2.1 | **Web system** |  | 7.38d | 2010-02-04 14:30 A | 2010-03-01 08:00 A |  | 100% |  |  | 29.25h | 29.25h | 16 |
| 22 | 2.1.1 | Integrate libraries (which have celestial objects of interest) to web site |  | 6h | 2010-02-04 14:30 A | 2010-02-08 16:00 A |  | 100% |  | Robert; Rob | 12h | 12h | 24 |
| 23 | 2.1.2 | Add scheduled job for parking telescope |  | 5h | 2010-02-22 16:00 A | 2010-02-25 17:00 A | 22, 13 | 100% | finish no earlier than 2010-02-25 17:00 | Rob | 5h | 5h | 20 |
| 24 | 2.1.3 | Telescope parking completed | milestone | 0d | 2010-03-01 08:00 A | 2010-03-01 08:00 A | 23 | 100% | start no earlier than 2010-03-01 08:00 | Rob; Robert |  |  |  |
| 25 | 2.1.4 | Add pagination to tables (e.g. schedule log table) |  | 1.5h | 2010-02-11 17:00 A | 2010-02-11 18:30 A |  | 100% |  | Rob | 1.5h | 1.5h |  |
| 26 | 2.1.5 | Bug fixing and refactoring |  | 3h | 2010-02-15 14:00 A | 2010-02-17 15:00 A | 25 | 100% |  | Rob | 3h | 3h | 12 |
| 27 | 2.1.6 | Schedule duration validations |  | 4h | 2010-02-17 15:00 A | 2010-02-18 17:00 A | 26 | 100% |  | Rob | 4h | 4h | 16 |
| 28 | 2.1.7 | Search forms to schedule index and user index |  | 1.5h | 2010-02-18 17:00 A | 2010-02-18 18:30 A | 27 | 100% |  | Rob | 1.5h | 1.5h |  |
| 29 | 2.1.8 | Add calendars to the schedule index and form |  | 1.5h | 2010-02-22 14:00 A | 2010-02-22 15:30 A | 28 | 100% |  | Rob | 1.5h | 1.5h |  |
| 30 | 2.1.9 | Online help enhancements |  | 45min | 2010-02-22 15:30 A | 2010-02-22 16:15 A | 29 | 100% |  | Rob | 0.75h | 0.75h |  |

| ID | WBS | Task | Type | Duration | Start | Finish | Predecessors | Complete | Total slack | Free slack | Constraint | Resources | Work | Actual work | Text1 |
| --- | --- | --- | --- | --- | --- | --- | --- | --- | --- | --- | --- | --- | --- | --- | --- |
| 31 | 2.2 | **Telescope-controlling application** |  | 0.25d | 2010-02-04 14:30 A | 2010-02-04 15:30 A |  | 100% |  |  |  |  | 1h | 1h | 16 |
| 32 | 2.2.1 | Add celestial object inputs into the application |  | 1h | 2010-02-04 14:30 A | 2010-02-04 15:30 A |  | 100% |  |  |  | Robert | 1h | 1h |  |
| 33 | 2.3 | **Documentation** |  | 6.38d | 2010-02-04 14:30 A | 2010-02-24 16:30 A |  | 100% |  |  |  |  | 34h | 34h | 16 |
| 34 | 2.3.1 | Update documentation |  | 16h | 2010-02-04 14:30 A | 2010-02-17 15:30 A | 19 | 100% |  |  |  | Rob; Robert | 32h | 32h | 64 |
| 35 | 2.3.2 | Web application metrics gathering |  | 2h | 2010-02-24 14:30 A | 2010-02-24 16:30 A | 18 | 100% |  |  | start no earlier than 2010-02-24 08:00 | Rob | 2h | 2h |  |
| 36 | 2.4 | Release #6: Libraries and GUI Enhancements | milestone | 0d | 2010-03-01 08:00 A | 2010-03-01 08:00 A | 21, 31, 33 | 100% |  |  | start no earlier than 2010-03-01 08:00 | Rob; Robert |  |  |  |
| 37 | 3 | **Iteration 7: Mobile Views** |  | 5.38d | 2010-03-01 14:00 | 2010-03-17 16:30 | 20 |  | 6.88d | 0d |  |  | 38.5h |  | 16 |
| 38 | 3.1 | **Web system** |  | 1.62d | 2010-03-01 14:00 | 2010-03-04 16:30 |  |  | 10.62d | 3.75d |  |  | 12.5h |  | 16 |
| 39 | 3.1.1 | Add validations for celestial object/coordinates |  | 2.5h | 2010-03-03 14:30 | 2010-03-04 15:00 |  |  | 11d |  | start no earlier than 2010-03-03 08:00 | Rob | 2.5h |  | 10 |
| 40 | 3.1.2 | Add mobile device views and additional functionality |  | 4h | 2010-03-03 14:30 | 2010-03-04 16:30 |  |  | 2.38d |  | start no earlier than 2010-03-03 08:00 | Rob | 4h |  | 16 |
| 41 | 3.1.3 | Fix bug with testing environment |  | 3h | 2010-03-01 14:00 | 2010-03-03 15:00 |  |  | 11.5d |  |  | Rob | 3h |  | 12 |
| 42 | 3.1.4 | Add administration section to online help |  | 1h | 2010-03-01 14:00 | 2010-03-01 15:00 |  |  | 12d |  |  | Rob | 1h |  |  |
| 43 | 3.1.5 | Refactor online help |  | 2h | 2010-03-01 14:00 | 2010-03-01 16:00 |  |  | 11.75d |  |  | Rob | 2h |  |  |
| 44 | 3.2 | **Documentation** |  | 5.38d | 2010-03-01 14:00 | 2010-03-17 16:30 |  |  | 6.88d | 0d |  |  | 26h |  | 16 |
| 45 | 3.2.1 | Draft acceptance test |  | 1h | 2010-03-11 18:00 | 2010-03-15 14:30 | 48 |  | 7.88d | 1d | start no earlier than 2010-03-04 08:00 | Robert | 1h |  |  |
| 46 | 3.2.2 | Update documentation |  | 6h | 2010-03-04 14:30 | 2010-03-08 16:00 | 36 |  | 6.88d | 0d | start no earlier than 2010-03-04 08:00 | Rob; Robert | 12h |  | 24 |
| 47 | 3.2.3 | Create state diagrams |  | 3h | 2010-03-08 16:00 | 2010-03-11 15:00 | 46 |  | 6.88d | 0d |  | Robert | 3h |  | 12 |
| 48 | 3.2.4 | Create activity diagrams |  | 3h | 2010-03-11 15:00 | 2010-03-11 18:00 | 47 |  | 6.88d | 0d |  | Robert | 3h |  | 12 |
| 49 | 3.2.5 | Create system-sequence diagrams |  | 2h | 2010-03-11 18:00 | 2010-03-15 15:30 | 48 |  | 6.88d | 0d |  | Rob | 2h |  |  |
| 50 | 3.2.6 | Create sequence diagrams for telescope-controlling application |  | 2h | 2010-03-15 15:30 | 2010-03-17 15:30 | 49 |  | 6.88d | 0d |  | Robert | 2h |  |  |
| 51 | 3.2.7 | Create class diagram for telescope-controlling application |  | 1h | 2010-03-17 15:30 | 2010-03-17 16:30 | 50 |  | 6.88d | 0d | start no earlier than 2010-02-17 08:00 | Robert | 1h |  |  |
| 52 | 3.2.8 | Create sequence diagrams for web application |  | 2h | 2010-03-01 14:00 | 2010-03-01 16:00 |  |  | 11.75d | 4.88d |  | Robert | 2h |  |  |
| 53 | 3.2.9 | All documentation finished | milestone | 0d | 2010-03-17 16:30 | 2010-03-17 16:30 | 52, 45, 47, 48, 49, 50, 51 |  | 6.88d |  |  | Rob; Robert |  |  |  |
| 54 | 3.3 | Release #7: Mobile Views | milestone | 0d | 2010-03-17 16:30 | 2010-03-17 16:30 | 38, 44 |  | 6.88d | 0d | start no earlier than 2010-03-11 08:00 | Rob; Robert |  |  |  |

| ID | WBS | Task | Type | Duration | Start | Finish | Predecessors | Total slack | Free slack | Constraint | Resources | Work | Text1 |
| --- | --- | --- | --- | --- | --- | --- | --- | --- | --- | --- | --- | --- | --- |
| 55 | 4 | **Iteration 8: Image Capturing** |  | 2.38d | 2010-03-18 14:30 | 2010-03-25 15:30 | 37 | 6.88d | 0d |  |  | 30h | 16 |
| 56 | 4.1 | **Web system** |  | 1d | 2010-03-18 14:30 | 2010-03-18 18:30 |  | 8.25d | 1.38d |  |  | 10h | 16 |
| 57 | 4.1.1 | Form improvements (on mobile devices) |  | 2h | 2010-03-18 14:30 | 2010-03-18 16:30 |  | 8.75d |  |  | Rob | 2h |  |
| 58 | 4.1.2 | Create rake task for image copying |  | 4h | 2010-03-18 14:30 | 2010-03-18 18:30 |  | 8.25d |  | start no earlier than 2010-02-04 08:00 | Rob | 4h | 16 |
| 59 | 4.1.3 | Integrate camera values to camera calls |  | 2h | 2010-03-18 14:30 | 2010-03-18 16:30 |  | 8.75d |  |  | Rob | 2h |  |
| 60 | 4.1.4 | Fix bug with testing environment |  | 2h | 2010-03-18 14:30 | 2010-03-18 16:30 |  | 8.75d |  |  | Rob | 2h |  |
| 61 | 4.2 | **Telescope-controlling application** |  | 2.38d | 2010-03-18 14:30 | 2010-03-25 15:30 |  | 6.88d | 0d |  |  | 12h | 24 |
| 62 | 4.2.1 | Create test program to handle image taking with specific parameters |  | 4.5h | 2010-03-18 14:30 | 2010-03-22 14:30 |  | 6.88d | 0d | start no earlier than 2010-02-10 08:00 | Robert | 4.5h | 18 |
| 63 | 4.2.2 | Implement functionality for compiling composite images |  | 4.5h | 2010-03-22 14:30 | 2010-03-25 15:00 | 62 | 6.88d | 0d | start no earlier than 2010-03-04 08:00 | Robert | 4.5h | 18 |
| 64 | 4.2.3 | Integrate camera to telescope-controlling application |  | 0.5h | 2010-03-25 15:00 | 2010-03-25 15:30 | 63 | 6.88d |  |  | Robert | 0.5h |  |
| 65 | 4.2.4 | Create unit tests for telescope-controlling application |  | 2.5h | 2010-03-18 14:30 | 2010-03-18 17:00 |  | 8.62d |  | start no earlier than 2010-02-15 08:00 | Robert | 2.5h | 10 |
| 66 | 4.3 | **Documentation** |  | 1d | 2010-03-18 14:30 | 2010-03-18 18:30 |  | 8.25d | 1.38d |  |  | 8h | 16 |
| 67 | 4.3.1 | Update documentation |  | 4h | 2010-03-18 14:30 | 2010-03-18 18:30 | 54 | 8.25d |  |  | Rob; Robert | 8h | 16 |
| 68 | 4.4 | Release #8: Image Capturing | milestone | 0d | 2010-03-25 15:30 | 2010-03-25 15:30 | 56, 61, 66 | 6.88d | 0d |  | Rob; Robert |  |  |
| 69 | 5 | **Iteration 9: Refactored Final Release** |  | 13.25d | 2010-03-25 15:30 | 2010-04-26 08:00 | 55 | 0d |  |  |  | 44h | 16 |
| 70 | 5.1 | Final refactoring |  | 5h | 2010-03-25 15:30 | 2010-03-29 16:00 | 68 | 6.88d | 0d |  | Rob; Robert | 10h | 20 |
| 71 | 5.2 | Changes to schedule log filtering for mobile device views |  | 3h | 2010-03-29 16:00 | 2010-04-01 15:00 | 70 | 6.38d | 0d | start no earlier than 2010-01-28 08:00 | Rob | 3h | 12 |
| 72 | 5.3 | **Deployment and End Testing** |  | 2.5d | 2010-04-01 15:00 | 2010-04-06 12:00 | 71 | 6.38d | 0d |  |  | 13h | 16 |
| 73 | 5.3.1 | Fix functional tests |  | 3h | 2010-04-01 15:00 | 2010-04-01 18:00 | 68 | 6.38d | 0d | start no earlier than 2010-01-07 08:00 | Rob | 3h | 12 |
| 74 | 5.3.2 | System testing |  | 2h | 2010-04-01 18:00 | 2010-04-05 15:30 | 73 | 6.38d | 0d |  | Rob; Robert | 4h |  |
| 75 | 5.3.3 | Integration testing |  | 3h | 2010-04-05 15:30 | 2010-04-06 10:00 | 74 | 6.38d | 0d |  | Robert | 3h | 12 |
| 76 | 5.3.4 | Final user acceptance test |  | 1h | 2010-04-06 10:00 | 2010-04-06 11:00 | 75 | 6.38d | 0d |  | Rob; Robert | 2h |  |
| 77 | 5.3.5 | Deploy systems to production environment |  | 1h | 2010-04-06 11:00 | 2010-04-06 12:00 | 76 | 6.38d |  |  | Rob | 1h |  |
| 78 | 5.4 | **Documentation** |  | 1.75d | 2010-04-06 13:00 | 2010-04-08 15:30 | 72 | 6.38d | 0d |  |  | 13h | 16 |
| 79 | 5.4.1 | Finalize documentation |  | 6h | 2010-04-06 13:00 | 2010-04-07 16:30 | 68 | 6.38d | 0d |  | Rob; Robert | 12h | 24 |
| 80 | 5.4.2 | Compile final metrics and project statistics |  | 1h | 2010-04-08 14:30 | 2010-04-08 15:30 | 79 | 6.38d |  |  | Robert | 1h |  |

| ID | WBS | Task | Type | Duration | Start | Finish | Predecessors | Total slack | Free slack | Constraint | Resources | Work | Text1 |
| --- | --- | --- | --- | --- | --- | --- | --- | --- | --- | --- | --- | --- | --- |
| 81 | 5.5 | **Final Presentation** |  | 7d | 2010-04-08 15:30 | 2010-04-26 08:00 | 78 | 0d |  |  |  | 5h | 16 |
| 82 | 5.5.1 | Create PowerPoint for final presentation |  | 2.5h | 2010-04-08 15:30 | 2010-04-08 18:00 |  | 6.38d | 0d |  | Rob; Robert | 5h | 10 |
| 83 | 5.5.2 | Internal presentation | milestone | 0d | 2010-04-08 18:00 | 2010-04-08 18:00 | 82 | 6.38d |  | start no earlier than 2010-04-08 08:00 | Rob; Robert |  |  |
| 84 | 5.5.3 | Present project to OC faculty and audience | milestone | 0d | 2010-04-26 08:00 | 2010-04-26 08:00 | 83 | 0d |  | start no earlier than 2010-04-26 08:00 | Rob; Robert |  |  |
| 85 | 5.6 | Original coding ceases | milestone | 0d | 2010-04-08 08:00 | 2010-04-08 08:00 |  | 7.25d |  | start no earlier than 2010-04-08 08:00 | Rob; Robert |  |  |
| 86 | 5.7 | Corrective coding ceases | milestone | 0d | 2010-04-20 08:00 | 2010-04-20 08:00 |  | 3.5d |  | start no earlier than 2010-04-20 08:00 | Rob; Robert |  |  |
| 87 | 5.8 | Final release | milestone | 0d | 2010-04-26 08:00 | 2010-04-26 08:00 |  | 0d |  | start no earlier than 2010-04-26 08:00 | Rob; Robert |  |  |
